# Barber_Shop_Turnos.xml

Schedule from MS Project XML, 2026-08-31 to 2027-08-06.

## Calendars

- Estandar[Imported]: Mon-Fri 08:00-17:00; Sat-Sun off.

## Resources

| Resource |
| --- |
| Unassigned |
| Project Manager |
| Lider Tecnico |
| Analista Funcional |
| Desarrollador Semisenior |
| Desarrollador Junior |
| Tester |
| Sponsor |
| Consultor |
| Peluquero |

## Schedule

| ID | WBS | Task | Type | Duration | Start | Finish | Predecessors | Resources |
| --- | --- | --- | --- | --- | --- | --- | --- | --- |
| 1 | 1 | **Implementacion de sistema de gestion de turnos web para taller barber shop** |  | 275.25d | 2026-08-31 | 2027-08-06 |  |  |
| 2 | 1.1 | **Fase 0 Gestion del Proyecto** |  | 29.5d | 2026-08-31 | 2026-10-06 |  |  |
| 3 | 1.1.1 | **Gestion de proyecto realizada** |  | 29.5d | 2026-08-31 | 2026-10-06 |  |  |
| 4 | 1.1.1.1 | Redactar acta de proyecto |  | 2.25d | 2026-08-31 | 2026-09-01 |  | Project Manager [90%]; Sponsor [10%] |
| 5 | 1.1.1.2 | Documentar matriz de riesgos |  | 4.5d | 2026-09-02 | 2026-09-07 | 4 | Lider Tecnico [20%]; Project Manager |
| 6 | 1.1.1.3 | Confeccionar diagrama de WBS |  | 3.88d | 2026-09-08 | 2026-09-11 | 5 | Project Manager; Lider Tecnico [50%]; Analista Funcional [50%]; Tester [50%] |
| 7 | 1.1.1.4 | Documentar matriz de roles y responsabilidades |  | 3.12d | 2026-09-11 | 2026-09-16 | 6 | Project Manager; Lider Tecnico [50%] |
| 8 | 1.1.1.5 | Documentar matriz de habilidades y competencias |  | 2.38d | 2026-09-16 | 2026-09-18 | 7 | Project Manager; Lider Tecnico [50%] |
| 9 | 1.1.1.6 | Documentar matriz de interesados |  | 3.75d | 2026-09-18 | 2026-09-23 | 8 | Project Manager [90%]; Sponsor [10%] |
| 10 | 1.1.1.7 | Documentar matriz de comunicaciones |  | 2.62d | 2026-09-23 | 2026-09-25 | 9 | Project Manager |
| 11 | 1.1.1.8 | Diseñar formato/plantilla de la bitacora de cambios |  | 1.75d | 2026-09-28 | 2026-09-29 | 10 | Project Manager |
| 12 | 1.1.1.10 | Confeccionar cronograma del proyecto |  | 5.25d | 2026-09-29 | 2026-10-06 | 11 | Project Manager [90%]; Sponsor [10%] |
| 13 | 1.2 | **Fase 1 Relevamiento** |  | 29.38d | 2026-10-06 | 2026-11-11 |  |  |
| 14 | 1.2.1 | Redactar casos de uso |  | 3d | 2026-11-03 | 2026-11-06 | 25 | Analista Funcional |
| 15 | 1.2.2 | Redactar acta de aprobacion |  | 1.12d | 2026-11-06 | 2026-11-09 | 14 | Analista Funcional; Project Manager [25%] |
| 16 | 1.2.3 | Obtener firma de aprobacion |  | 2.38d | 2026-11-09 | 2026-11-11 | 15 | Analista Funcional [55.56%]; Project Manager [13.89%]; Sponsor [55.56%] |
| 17 | 1.2.4 | **(E) Reconocimiento de la organizacion** |  | 22.88d | 2026-10-06 | 2026-11-03 | 12 |  |
| 18 | 1.2.4.1 | Coordinar agenda de entrevistas |  | 3d | 2026-10-06 | 2026-10-08 |  | Analista Funcional [50%]; Consultor [25%]; Peluquero [25%] |
| 19 | 1.2.4.2 | Realizar entrevistas |  | 4.88d | 2026-10-08 | 2026-10-15 | 18 | Analista Funcional [50%]; Consultor [15%]; Peluquero [20%]; Sponsor [15%] |
| 20 | 1.2.4.3 | Documentar resultados de entrevistas |  | 3d | 2026-10-15 | 2026-10-19 | 19 | Analista Funcional |
| 21 | 1.2.4.4 | Relevar flujo de procesos actual |  | 3.25d | 2026-10-19 | 2026-10-22 | 20 | Analista Funcional [75%]; Consultor [25%] |
| 22 | 1.2.4.5 | Documentar flujo de procesos |  | 2.12d | 2026-10-22 | 2026-10-26 | 21 | Analista Funcional |
| 23 | 1.2.4.6 | Identificar requisitos funcionales |  | 2.38d | 2026-10-26 | 2026-10-28 | 22 | Analista Funcional |
| 24 | 1.2.4.7 | Identificar requisitos no funcionales |  | 1.5d | 2026-10-28 | 2026-10-30 | 23 | Analista Funcional |
| 25 | 1.2.4.8 | Documentar requisitos del sistema |  | 2.75d | 2026-10-30 | 2026-11-03 | 24 | Analista Funcional |
| 26 | 1.2.5 | Relevamiento documentado | milestone | 0d | 2026-11-11 | 2026-11-11 | 16 |  |

| ID | WBS | Task | Type | Duration | Start | Finish | Predecessors | Resources |
| --- | --- | --- | --- | --- | --- | --- | --- | --- |
| 27 | 1.3 | **Fase 2 Diseño** |  | 28.12d | 2026-11-11 | 2026-12-16 |  |  |
| 28 | 1.3.1 | Diseñar mockups de pantallas principales |  | 3.5d | 2026-11-11 | 2026-11-16 | 26 | Desarrollador Junior [75%]; Lider Tecnico [25%] |
| 29 | 1.3.2 | Presentar mockups al Sponsor |  | 1.62d | 2026-11-16 | 2026-11-17 | 28 | Desarrollador Junior [37.04%]; Lider Tecnico [9.26%]; Peluquero [37.04%]; Consultor [37%] |
| 30 | 1.3.3 | Ajustar mockups segun feedback |  | 2.62d | 2026-11-17 | 2026-11-20 | 29 | Desarrollador Junior; Lider Tecnico [25%] |
| 31 | 1.3.4 | Validar mockups con el Sponsor |  | 1.75d | 2026-11-20 | 2026-11-23 | 30 | Desarrollador Junior [35.71%]; Lider Tecnico [8.93%]; Consultor [35.71%]; Peluquero [35.71%] |
| 32 | 1.3.5 | Definir estandares de codificacion |  | 1.25d | 2026-11-26 | 2026-11-27 | 52 | Lider Tecnico |
| 33 | 1.3.6 | Definir buenas practicas de trabajo en equipo |  | 1.38d | 2026-11-27 | 2026-11-30 | 32 | Lider Tecnico |
| 34 | 1.3.7 | Documentar normas y buenas practicas |  | 1.5d | 2026-11-30 | 2026-12-02 | 33 | Lider Tecnico |
| 35 | 1.3.8 | Identificar modulos a desarrollar |  | 1.62d | 2026-12-02 | 2026-12-03 | 34 | Lider Tecnico |
| 36 | 1.3.9 | Asignar modulos a cada desarrollador |  | 1.75d | 2026-12-03 | 2026-12-07 | 35 | Lider Tecnico |
| 37 | 1.3.11 | Documentar distribucion de modulos |  | 1.88d | 2026-12-07 | 2026-12-08 | 36 | Lider Tecnico |
| 38 | 1.3.12 | Definir criterios de aceptacion de calidad |  | 1.38d | 2026-11-23 | 2026-11-24 | 31 | Project Manager [65.65%]; Lider Tecnico [65.65%] |
| 39 | 1.3.13 | Presentar criterios al Sponsor |  | 1.5d | 2026-11-25 | 2026-11-26 | 38 | Project Manager [50%]; Lider Tecnico [50%]; Sponsor [25%] |
| 40 | 1.3.14 | Obtener acuerdo del Sponsor |  | 1.5d | 2026-11-26 | 2026-11-27 | 39 | Project Manager [50%]; Lider Tecnico [50%]; Sponsor [50%] |
| 41 | 1.3.15 | Redactar acta de aprobacion de diseño |  | 2d | 2026-12-08 | 2026-12-10 | 37, 40, 57 | Lider Tecnico [75%]; Project Manager [25%] |
| 42 | 1.3.16 | Presentar documentacion de diseño al Sponsor |  | 2.12d | 2026-12-10 | 2026-12-14 | 41 | Lider Tecnico [33.33%]; Project Manager [33.33%]; Sponsor [33.33%] |
| 43 | 1.3.17 | Obtener firma de aprobacion |  | 2.12d | 2026-12-14 | 2026-12-16 | 42 | Lider Tecnico [33.33%]; Project Manager [33.33%]; Sponsor [33.33%] |
| 44 | 1.3.18 | **(E) Infraestructura y arquitectura** |  | 12.5d | 2026-11-11 | 2026-11-26 | 26 |  |
| 45 | 1.3.18.1 | Identificar alternativas de infraestructura |  | 1.25d | 2026-11-11 | 2026-11-12 |  | Lider Tecnico |
| 46 | 1.3.18.2 | Comparar alternativas |  | 1.38d | 2026-11-12 | 2026-11-13 | 45 | Lider Tecnico |
| 47 | 1.3.18.3 | Documentar evaluacion y seleccion |  | 1.5d | 2026-11-13 | 2026-11-16 | 46 | Lider Tecnico |
| 48 | 1.3.18.4 | Identificar alternativas de lenguajes/frameworks |  | 1.62d | 2026-11-17 | 2026-11-18 | 47 | Lider Tecnico |
| 49 | 1.3.18.5 | Comparar alternativas |  | 1.75d | 2026-11-18 | 2026-11-19 | 48 | Lider Tecnico |
| 50 | 1.3.18.6 | Documentar seleccion de tecnologias |  | 1.88d | 2026-11-20 | 2026-11-23 | 49 | Lider Tecnico |
| 51 | 1.3.18.7 | Definir componentes y capas |  | 2d | 2026-11-23 | 2026-11-25 | 50 | Lider Tecnico |
| 52 | 1.3.18.8 | Confeccionar diagrama de arquitectura |  | 1.12d | 2026-11-25 | 2026-11-26 | 51 | Lider Tecnico |
| 53 | 1.3.18.9 | Identificar alternativas de motores de BD |  | 1.25d | 2026-11-11 | 2026-11-12 |  | Desarrollador Semisenior; Lider Tecnico |
| 54 | 1.3.18.10 | Comparar alternativas |  | 1.38d | 2026-11-12 | 2026-11-13 | 53 | Desarrollador Semisenior; Lider Tecnico [25%] |
| 55 | 1.3.18.11 | Documentar evaluacion y seleccion |  | 1.5d | 2026-11-13 | 2026-11-16 | 54 | Desarrollador Semisenior; Lider Tecnico [25%] |
| 56 | 1.3.18.12 | Identificar entidades y atributos |  | 1.62d | 2026-11-17 | 2026-11-18 | 55 | Desarrollador Semisenior; Lider Tecnico [25%] |
| 57 | 1.3.18.13 | Confeccionar diagrama de relaciones |  | 2.88d | 2026-11-18 | 2026-11-20 | 56 | Desarrollador Semisenior; Lider Tecnico [25%] |
| 58 | 1.3.19 | Diseño finalizado | milestone | 0d | 2026-12-16 | 2026-12-16 | 43, 57 |  |

| ID | WBS | Task | Duration | Start | Finish | Predecessors | Resources |
| --- | --- | --- | --- | --- | --- | --- | --- |
| 59 | 1.4 | **Fase 3 Desarrollo** | 62.5d | 2026-12-16 | 2027-03-03 |  |  |
| 60 | 1.4.1 | **(E) SCM** | 2.12d | 2026-12-16 | 2026-12-18 | 58 |  |
| 61 | 1.4.1.1 | Configurar repositorio y control de versiones | 1d | 2026-12-16 | 2026-12-17 |  | Desarrollador Junior; Desarrollador Semisenior [50%]; Lider Tecnico [25%] |
| 62 | 1.4.1.2 | Configurar entorno de desarrollo local | 1.12d | 2026-12-17 | 2026-12-18 | 61 | Desarrollador Junior; Desarrollador Semisenior [50%]; Lider Tecnico [25%] |
| 63 | 1.4.2 | **(E) Desarrollo** | 48d | 2026-12-18 | 2027-02-16 | 58 |  |
| 64 | 1.4.2.1 | Desarrollar funcionalidad de reserva de turnos | 9.12d | 2026-12-18 | 2026-12-30 | 62 | Desarrollador Semisenior; Desarrollador Junior [50%] |
| 65 | 1.4.2.2 | Realizar testing unitario del modulo | 2.25d | 2026-12-30 | 2027-01-01 | 64 | Desarrollador Semisenior; Desarrollador Junior [50%] |
| 66 | 1.4.2.3 | Realizar code review del modulo | 1.38d | 2027-01-18 | 2027-01-19 | 72, 65 | Lider Tecnico [25%]; Tester [25%]; Desarrollador Semisenior [25%]; Desarrollador Junior [25%] |
| 67 | 1.4.2.4 | Desarrollar funcionalidad de gestion de agenda | 8.12d | 2027-01-01 | 2027-01-12 | 65 | Desarrollador Semisenior; Desarrollador Junior [50%] |
| 68 | 1.4.2.5 | Realizar testing unitario del modulo | 2.38d | 2027-01-12 | 2027-01-14 | 67 | Desarrollador Semisenior; Desarrollador Junior [50%] |
| 69 | 1.4.2.6 | Realizar code review del modulo | 1.5d | 2027-02-12 | 2027-02-15 | 78, 68 | Lider Tecnico [25%]; Desarrollador Semisenior [25%]; Desarrollador Junior [25%]; Tester [25%] |
| 70 | 1.4.2.7 | Desarrollar funcionalidad de notificaciones | 5.75d | 2026-12-18 | 2026-12-25 | 62 | Desarrollador Junior; Desarrollador Semisenior [50%] |
| 71 | 1.4.2.8 | Realizar testing unitario del modulo | 1.88d | 2026-12-25 | 2026-12-28 | 70 | Desarrollador Junior; Desarrollador Semisenior [50%] |
| 72 | 1.4.2.9 | Realizar code review del modulo | 16.62d | 2026-12-29 | 2027-01-18 | 71 | Lider Tecnico [25%]; Desarrollador Semisenior [25%]; Desarrollador Junior [25%]; Tester [25%] |
| 73 | 1.4.2.10 | Desarrollar funcionalidad del panel de administracion | 6d | 2027-01-14 | 2027-01-21 | 68 | Desarrollador Semisenior; Desarrollador Junior [50%] |
| 74 | 1.4.2.11 | Realizar testing unitario del modulo | 2.25d | 2027-01-22 | 2027-01-25 | 73 | Desarrollador Semisenior; Desarrollador Junior [50%] |
| 75 | 1.4.2.12 | Realizar code review del modulo | 1.38d | 2027-02-15 | 2027-02-16 | 69, 74 | Lider Tecnico [25%]; Desarrollador Semisenior [25%]; Desarrollador Junior [25%]; Tester [25%] |
| 76 | 1.4.2.13 | Desarrollar funcionalidad de historial de turnos | 4.25d | 2026-12-29 | 2027-01-01 | 71 | Desarrollador Junior |
| 77 | 1.4.2.14 | Realizar testing unitario del modulo | 1.38d | 2027-01-01 | 2027-01-04 | 76 | Desarrollador Junior |
| 78 | 1.4.2.15 | Realizar code review del modulo | 19.5d | 2027-01-20 | 2027-02-12 | 66, 77 | Lider Tecnico [25%]; Desarrollador Semisenior [25%]; Desarrollador Junior [25%]; Tester [25%] |
| 79 | 1.4.3 | **(E) Integracion** | 12.38d | 2027-02-16 | 2027-03-03 | 58 |  |
| 80 | 1.4.3.1 | Integrar todos los modulos desarrollados | 4.88d | 2027-02-16 | 2027-02-23 | 75 | Lider Tecnico [127.88%]; Desarrollador Semisenior [63.94%]; Desarrollador Junior [63.94%] |
| 81 | 1.4.3.2 | Realizar test de integracion entre modulos | 4.12d | 2027-02-23 | 2027-02-26 | 80 | Lider Tecnico [112.5%]; Desarrollador Semisenior [56.25%]; Desarrollador Junior [56.25%] |
| 82 | 1.4.3.3 | Validar funcionamiento del sistema integrado | 3.38d | 2027-02-26 | 2027-03-03 | 81 | Lider Tecnico [112.5%]; Desarrollador Semisenior [56.25%]; Desarrollador Junior [56.25%] |

| ID | WBS | Task | Type | Duration | Start | Finish | Predecessors | Resources |
| --- | --- | --- | --- | --- | --- | --- | --- | --- |
| 83 | 1.5 | **Fase 4 Validacion y Testing** |  | 81.38d | 2027-03-03 | 2027-06-14 |  |  |
| 84 | 1.5.1 | Recopilar errores detectados |  | 2.62d | 2027-05-05 | 2027-05-10 | 108 | Tester; Lider Tecnico [25%] |
| 85 | 1.5.2 | Clasificar errores segun severidad |  | 2.75d | 2027-05-10 | 2027-05-12 | 84 | Tester; Lider Tecnico [25%] |
| 86 | 1.5.3 | Documentar relevamiento de errores |  | 2.88d | 2027-05-12 | 2027-05-17 | 85 | Tester; Lider Tecnico [25%] |
| 87 | 1.5.4 | Corregir errores relevados |  | 5.25d | 2027-05-17 | 2027-05-21 | 86 | Desarrollador Semisenior; Desarrollador Junior [50%]; Lider Tecnico [25%]; Tester [25%] |
| 88 | 1.5.5 | Re-testear funcionalidades corregidas |  | 3.5d | 2027-05-21 | 2027-05-26 | 87 | Desarrollador Semisenior [114.29%]; Desarrollador Junior [57.14%]; Tester [28.57%] |
| 89 | 1.5.6 | Verificar cumplimiento de cada criterio |  | 3.75d | 2027-05-26 | 2027-06-01 | 86, 88 | Tester [55.56%]; Project Manager [13.89%]; Lider Tecnico [55.56%] |
| 90 | 1.5.7 | Documentar resultado de la verificacion |  | 2.88d | 2027-06-01 | 2027-06-03 | 89 | Tester [125%] |
| 91 | 1.5.8 | Redactar acta de aceptacion |  | 3d | 2027-06-03 | 2027-06-08 | 90 | Tester [50%]; Project Manager [50%] |
| 92 | 1.5.9 | Obtener firma de aceptacion |  | 4.25d | 2027-06-08 | 2027-06-14 | 91 | Tester [33.33%]; Project Manager [33.33%]; Sponsor [33.33%] |
| 93 | 1.5.10 | **(E)Plan de pruebas** |  | 21d | 2027-03-03 | 2027-03-30 | 82 |  |
| 94 | 1.5.10.1 | Definir alcance y estrategia de testing |  | 3.62d | 2027-03-03 | 2027-03-09 |  | Tester; Project Manager [25%] |
| 95 | 1.5.10.2 | Redactar plan de pruebas |  | 2.75d | 2027-03-09 | 2027-03-11 | 94 | Tester; Project Manager [25%] |
| 96 | 1.5.10.3 | Obtener validacion del Sponsor |  | 4d | 2027-03-11 | 2027-03-17 | 95 | Tester [55.56%]; Project Manager [13.89%]; Sponsor [55.56%] |
| 97 | 1.5.10.4 | Definir casos de prueba no funcionales |  | 4d | 2027-03-17 | 2027-03-22 | 96 | Tester |
| 98 | 1.5.10.5 | Ejecutar casos de prueba |  | 4.25d | 2027-03-22 | 2027-03-26 | 97 | Tester; Desarrollador Semisenior [50%]; Desarrollador Junior [50%] |
| 99 | 1.5.10.6 | Registrar resultados de la ejecucion |  | 2.38d | 2027-03-26 | 2027-03-30 | 98 | Tester [133.33%]; Desarrollador Semisenior [66.67%] |
| 100 | 1.5.11 | **(E) Prueba piloto** |  | 29.5d | 2027-03-30 | 2027-05-05 | 82 |  |
| 101 | 1.5.11.1 | Seleccionar sucursales para el piloto |  | 2.5d | 2027-03-30 | 2027-04-01 | 99 | Tester [90%]; Lider Tecnico [35%] |
| 102 | 1.5.11.2 | Definir duracion y criterios de exito |  | 2.62d | 2027-04-01 | 2027-04-06 | 101 | Tester [90%]; Lider Tecnico [35%] |
| 103 | 1.5.11.3 | Redactar plan de prueba piloto |  | 2.75d | 2027-04-06 | 2027-04-08 | 102 | Tester [34.15%]; Analista Funcional [17.07%]; Lider Tecnico [8.54%]; Peluquero [34.15%]; Consultor [34.15%]; Sponsor [34.15%] |
| 104 | 1.5.11.4 | Desplegar el sistema para las sucursales |  | 2.38d | 2027-04-08 | 2027-04-12 | 103 | Tester [90%]; Lider Tecnico [35%] |
| 105 | 1.5.11.5 | Ejecutar la prueba piloto con usuarios reales |  | 8.12d | 2027-04-12 | 2027-04-21 | 104 | Tester [53.85%]; Lider Tecnico [13.46%]; Consultor [53.85%]; Peluquero [53.85%] |
| 106 | 1.5.11.6 | Registrar incidencias durante la ejecucion |  | 6.25d | 2027-04-21 | 2027-04-29 | 105 | Tester [114.45%]; Lider Tecnico [34.37%] |
| 107 | 1.5.11.7 | Consolidar resultados del piloto |  | 2.38d | 2027-04-29 | 2027-05-03 | 106 | Tester |
| 108 | 1.5.11.8 | Redactar informe de resultados |  | 2.5d | 2027-05-03 | 2027-05-05 | 107 | Tester |
| 109 | 1.5.12 | Validacion del sistema | milestone | 0d | 2027-06-14 | 2027-06-14 | 92 |  |

| ID | WBS | Task | Type | Duration | Start | Finish | Predecessors | Resources |
| --- | --- | --- | --- | --- | --- | --- | --- | --- |
| 110 | 1.6 | **Fase 5 Capacitacion** |  | 14.75d | 2027-06-14 | 2027-07-01 |  |  |
| 111 | 1.6.1 | **(E) Capacitacion** |  | 14.75d | 2027-06-14 | 2027-07-01 | 109 |  |
| 112 | 1.6.1.1 | Redactar manual de usuario |  | 4.25d | 2027-06-14 | 2027-06-17 |  | Analista Funcional [75%] |
| 113 | 1.6.1.2 | Entregar manual de usuario al Cliente |  | 2.38d | 2027-06-18 | 2027-06-22 | 112 | Analista Funcional [66%]; Project Manager [66%] |
| 114 | 1.6.1.3 | Redactar manual de administracion |  | 4.25d | 2027-06-14 | 2027-06-17 |  | Lider Tecnico; Desarrollador Semisenior [50%]; Desarrollador Junior [50%] |
| 115 | 1.6.1.4 | Entregar manual de administracion al Cliente |  | 2.38d | 2027-06-18 | 2027-06-22 | 114 | Analista Funcional [100%]; Project Manager [100%] |
| 116 | 1.6.1.5 | Coordinar horarios de capacitacion |  | 3.62d | 2027-06-22 | 2027-06-25 | 113, 115 | Analista Funcional [71.89%]; Project Manager [31.95%]; Consultor [46.15%]; Peluquero [66.67%] |
| 117 | 1.6.1.6 | Dictar capacitacion al personal |  | 4.5d | 2027-06-25 | 2027-07-01 | 116 | Analista Funcional [56.84%]; Lider Tecnico [14.21%]; Consultor [31.58%]; Sponsor [45.61%]; Peluquero [56.84%] |
| 118 | 1.7 | **Fase 6 Despliegue** |  | 11.62d | 2027-07-01 | 2027-07-15 |  |  |
| 119 | 1.7.1 | **(E) Despliegue** |  | 11.62d | 2027-07-01 | 2027-07-15 | 117 |  |
| 120 | 1.7.1.1 | Configurar infraestructura de produccion |  | 4d | 2027-07-01 | 2027-07-06 |  | Lider Tecnico [116.67%]; Desarrollador Semisenior [58.33%] |
| 121 | 1.7.1.2 | Desplegar la aplicacion en produccion |  | 2d | 2027-07-06 | 2027-07-08 | 120 | Lider Tecnico [116.67%]; Desarrollador Semisenior [58.33%] |
| 122 | 1.7.1.3 | Redactar documentacion tecnica final |  | 3.25d | 2027-07-08 | 2027-07-13 | 121 | Lider Tecnico |
| 123 | 1.7.1.4 | Entregar documentacion tecnica al Cliente |  | 2.38d | 2027-07-13 | 2027-07-15 | 122 | Lider Tecnico |
| 124 | 1.8 | **Fase 7 Cierre del Proyecto** |  | 18d | 2027-07-15 | 2027-08-06 |  |  |
| 125 | 1.8.1 | Recopilar lecciones aprendidas con el equipo |  | 2.5d | 2027-07-15 | 2027-07-19 | 123 | Project Manager; Lider Tecnico [50%]; Analista Funcional [50%]; Desarrollador Semisenior [50%]; Desarrollador Junior [50%]; Tester [50%] |
| 126 | 1.8.2 | Documentar lecciones aprendidas |  | 2.62d | 2027-07-19 | 2027-07-22 | 125 | Project Manager; Lider Tecnico [50%]; Analista Funcional [50%]; Desarrollador Semisenior [50%]; Desarrollador Junior [50%]; Tester [50%] |
| 127 | 1.8.3 | Consolidar informacion del proyecto |  | 2.75d | 2027-07-22 | 2027-07-26 | 126 | Project Manager |
| 128 | 1.8.4 | Redactar informe de cierre |  | 2.88d | 2027-07-26 | 2027-07-29 | 127 | Project Manager |
| 129 | 1.8.5 | Redactar acta de conformidad |  | 3d | 2027-07-29 | 2027-08-02 | 128 | Project Manager |
| 130 | 1.8.6 | Obtener firma del acta de conformidad |  | 4.25d | 2027-08-02 | 2027-08-06 | 129 | Project Manager [50%]; Sponsor [50%] |
| 131 | 1.8.7 | Cierre de proyecto | milestone | 0d | 2027-08-06 | 2027-08-06 | 130 |  |
