# Barber_Shop_Turnos.xml

Schedule from MS Project XML, 2026-03-02 to 2027-02-05.

## Calendars

- Estandar[Imported][Imported][Imported]: Mon-Fri 08:00-17:00; Sat-Sun off.

## Resources

| Resource | Rate |
| --- | --- |
| Unassigned |  |
| Project Manager | 15000 |
| Lider Tecnico | 12000 |
| Analista Funcional | 9000 |
| Desarrollador Semisenior | 7500 |
| Desarrollador Junior | 7000 |
| Tester | 8500 |

## Schedule

| ID | WBS | Task | Duration | Start | Finish | Predecessors | Constraint | Resources |
| --- | --- | --- | --- | --- | --- | --- | --- | --- |
| 1 | 1 | **Implementacion de sistema de gestion de turnos web para taller barber shop** | 142.82d | 2026-03-02 | 2027-02-05 |  |  |  |
| 2 | 1.1.1 | **Fase 0 Gestion del proyecto** | 14.12d | 2026-03-02 | 2026-04-07 |  |  |  |
| 3 | 1.1.1.1 | Redactar acta de proyecto | 4.5d | 2026-03-02 | 2026-03-05 |  |  | Project Manager |
| 4 | 1.1.1.2 | Documentar matriz de riesgos | 3.5d | 2026-03-04 | 2026-03-06 | 3 |  | Lider Tecnico [16.67%]; Project Manager [83.33%] |
| 5 | 1.1.1.3 | Confeccionar diagrama de WBS | 4.5d | 2026-03-05 | 2026-03-09 | 4 |  | Project Manager [40%]; Lider Tecnico [20%]; Analista Funcional [20%]; Tester [20%] |
| 6 | 1.1.1.4 | Documentar matriz de roles y responsabilidades | 3.5d | 2026-03-06 | 2026-03-10 | 5 |  | Project Manager [66.67%]; Lider Tecnico [33.33%] |
| 7 | 1.1.1.5 | Documentar matriz de habilidades y competencias | 3.5d | 2026-03-09 | 2026-03-11 | 6 |  | Project Manager [66.67%]; Lider Tecnico [33.33%] |
| 8 | 1.1.1.6 | Documentar matriz de interesados | 3.12d | 2026-03-10 | 2026-03-12 | 7 |  | Project Manager |
| 9 | 1.1.1.7 | Documentar matriz de comunicaciones | 3.12d | 2026-03-11 | 2026-03-13 | 8 |  | Project Manager |
| 10 | 1.1.1.8 | Diseñar formato/plantilla de la bitacora de cambios | 4.25d | 2026-03-12 | 2026-03-17 | 9 |  | Project Manager |
| 11 | 1.1.1.10 | Confeccionar cronograma del proyecto | 3.88d | 2026-03-16 | 2026-03-19 | 10 | start no later than 2026-03-16 | Project Manager |
| 12 | 1.2 | (E) Acta de proyectos elaborada | 0d | 2026-03-04 | 2026-03-04 | 3 |  |  |
| 13 | 1.3 | (E) EDT elaborada | 0d | 2026-03-06 | 2026-03-06 | 5 |  |  |
| 14 | 1.4 | (E) Cronograma de proyecto elaborado | 0d | 2026-03-18 | 2026-03-18 | 11, 13 |  |  |
| 15 | 1.2 | **Fase 1 Relevamiento** | 17.62d | 2026-03-18 | 2026-04-23 |  |  |  |
| 16 | 1.2.4.1 | Coordinar agenda de entrevistas | 2.75d | 2026-03-18 | 2026-03-20 | 14 | start no later than 2026-03-18 | Analista Funcional |
| 17 | 1.2.4.2 | Realizar entrevistas | 7.25d | 2026-03-19 | 2026-03-27 | 16 | start no later than 2026-03-19 | Analista Funcional |
| 18 | 1.2.4.3 | Documentar resultados de entrevistas | 3.12d | 2026-03-26 | 2026-03-30 | 17 |  | Analista Funcional |
| 19 | 1.2.4.4 | Relevar flujo de procesos actual | 4.25d | 2026-03-27 | 2026-04-01 | 18 |  | Analista Funcional |
| 20 | 1.2.4.5 | Documentar flujo de procesos | 3.12d | 2026-03-31 | 2026-04-02 | 19 |  | Analista Funcional |
| 21 | 1.2.4.6 | Identificar requisitos funcionales | 4.25d | 2026-04-01 | 2026-04-06 | 20 |  | Analista Funcional |
| 22 | 1.2.4.7 | Identificar requisitos no funcionales | 4.25d | 2026-04-03 | 2026-04-08 | 21 |  | Analista Funcional |
| 23 | 1.2.4.8 | Documentar requisitos del sistema | 3.12d | 2026-04-07 | 2026-04-09 | 22 |  | Analista Funcional |
| 24 | 1.2.2 | Redactar acta de aprobacion | 3.3d | 2026-04-08 | 2026-04-10 | 23 |  | Analista Funcional [80%]; Project Manager [20%] |
| 25 | 1.6 | (E) Casos de uso elaborados | 0d | 2026-04-08 | 2026-04-08 | 23 |  |  |
| 26 | 1.7 | (E) Entrevistas con peluqueros y encargados realizadas y documentadas | 0d | 2026-03-27 | 2026-03-27 | 18 |  |  |
| 27 | 1.8 | (E) Acta de aprobacion de relevamiento y requisitos elaborada y firmada | 0d | 2026-04-09 | 2026-04-09 | 24 |  |  |

| ID | WBS | Task | Duration | Start | Finish | Predecessors | Constraint | Resources |
| --- | --- | --- | --- | --- | --- | --- | --- | --- |
| 28 | 1.3 | **Fase 2 Diseño** | 9.2d | 2026-04-09 | 2026-05-14 |  |  |  |
| 29 | 1.3.18.1 | Identificar alternativas de infraestructura | 2d | 2026-04-09 | 2026-04-10 | 27 |  | Lider Tecnico |
| 30 | 1.3.18.2 | Comparar alternativas | 2.7d | 2026-04-09 | 2026-04-13 | 29 |  | Lider Tecnico |
| 31 | 1.3.18.3 | Documentar evaluacion y seleccion | 2.7d | 2026-04-10 | 2026-04-14 | 30 |  | Lider Tecnico |
| 32 | 1.3.18.9 | Identificar alternativas de motores de BD | 2.15d | 2026-04-13 | 2026-04-14 | 31 |  | Desarrollador Semisenior [50%]; Lider Tecnico [50%] |
| 33 | 1.3.18.10 | Comparar alternativas | 2.85d | 2026-04-13 | 2026-04-15 | 32 |  | Desarrollador Semisenior [80%]; Lider Tecnico [20%] |
| 34 | 1.3.18.11 | Documentar evaluacion y seleccion | 2.85d | 2026-04-14 | 2026-04-16 | 33 |  | Desarrollador Semisenior [80%]; Lider Tecnico [20%] |
| 35 | 1.3.18.13 | Confeccionar diagrama de relaciones | 1.9d | 2026-04-15 | 2026-04-16 | 34 |  |  |
| 36 | 1.3.18.7 | Definir componentes y capas | 3.02d | 2026-04-13 | 2026-04-15 | 31 |  | Lider Tecnico |
| 37 | 1.3.18.8 | Confeccionar diagrama de arquitectura | 1.9d | 2026-04-14 | 2026-04-15 | 36 |  | Lider Tecnico |
| 38 | 1.3.1 | Diseñar mockups de pantallas principales | 5.17d | 2026-04-14 | 2026-04-20 | 37 |  | Desarrollador Junior [75%]; Lider Tecnico [25%] |
| 39 | 1.3.3 | Ajustar mockups segun feedback | 2.55d | 2026-04-16 | 2026-04-20 | 38 |  | Desarrollador Junior [80%]; Lider Tecnico [20%] |
| 40 | 1.3.5 | Definir estandares de codificacion | 3.42d | 2026-04-14 | 2026-04-17 | 37 |  | Lider Tecnico |
| 41 | 1.3.7 | Documentar normas y buenas practicas | 3.02d | 2026-04-13 | 2026-04-15 | 31 |  | Lider Tecnico |
| 42 | 1.3.9 | Asignar modulos a cada desarrollador | 3.02d | 2026-04-13 | 2026-04-15 | 31 | start no later than 2026-12-03 | Lider Tecnico |
| 43 | 1.3.11 | Documentar distribucion de modulos | 2.4d | 2026-04-14 | 2026-04-16 | 42 |  | Lider Tecnico |
| 44 | 1.3.12 | Definir criterios de aceptacion de calidad | 5.92d | 2026-04-15 | 2026-04-21 | 37, 43 |  | Project Manager [50%]; Lider Tecnico [50%] |
| 45 | 1.3.15 | Redactar acta de aprobacion de diseño | 3.3d | 2026-04-20 | 2026-04-22 | 37, 44 |  | Lider Tecnico [75%]; Project Manager [25%] |
| 46 | 1.10 | (E) Criterios de aceptacion de calidad del sistema definidos y acordados con el sponsor | 0d | 2026-04-20 | 2026-04-20 | 44 |  |  |
| 47 | 1.11 | (E) Acta de aprobacion de diseño elaborada y firmada | 0d | 2026-04-21 | 2026-04-21 | 37, 44, 45 |  |  |
| 48 | 1.4 | **Fase 3 Desarrollo** | 42.75d | 2026-04-21 | 2026-07-07 |  |  |  |
| 49 | 1.4.1.1 | Configurar repositorio y control de versiones | 5.3d | 2026-04-21 | 2026-04-24 | 47 |  | Desarrollador Junior [57.14%]; Desarrollador Semisenior [28.57%]; Lider Tecnico [14.29%] |
| 50 | 1.4.1.2 | Configurar entorno de desarrollo local | 4.67d | 2026-04-23 | 2026-04-28 | 49 |  | Desarrollador Junior [57.14%]; Desarrollador Semisenior [28.57%]; Lider Tecnico [14.29%] |
| 51 | 1.4.2.1 | Desarrollar funcionalidad de reserva de turnos | 7.8d | 2026-04-27 | 2026-05-05 | 50 |  | Desarrollador Semisenior [66.67%]; Desarrollador Junior [33.33%] |
| 52 | 1.4.2.2 | Realizar testing unitario del modulo | 2.67d | 2026-05-04 | 2026-05-06 | 51 |  | Desarrollador Semisenior [66.67%]; Desarrollador Junior [33.33%] |
| 53 | 1.4.2.3 | Realizar code review del modulo | 4.42d | 2026-05-11 | 2026-05-13 | 59, 52 |  | Lider Tecnico [25%]; Tester [25%]; Desarrollador Semisenior [25%]; Desarrollador Junior [25%] |
| 54 | 1.4.2.4 | Desarrollar funcionalidad de gestion de agenda | 9.05d | 2026-05-05 | 2026-05-14 | 52 |  | Desarrollador Semisenior [66.67%]; Desarrollador Junior [33.33%] |
| 55 | 1.4.2.5 | Realizar testing unitario del modulo | 2.67d | 2026-05-13 | 2026-05-15 | 54 | start no later than 2027-01-12 | Desarrollador Semisenior [66.67%]; Desarrollador Junior [33.33%] |
| 56 | 1.4.2.6 | Realizar code review del modulo | 4.55d | 2026-05-19 | 2026-05-21 | 65, 55 |  | Lider Tecnico [25%]; Desarrollador Semisenior [25%]; Desarrollador Junior [25%]; Tester [25%] |
| 57 | 1.4.2.7 | Desarrollar funcionalidad de notificaciones | 10.3d | 2026-04-27 | 2026-05-07 | 50 |  | Desarrollador Junior [66.67%]; Desarrollador Semisenior [33.33%] |
| 58 | 1.4.2.8 | Realizar testing unitario del modulo | 3.42d | 2026-05-06 | 2026-05-08 | 57 |  | Desarrollador Junior [66.67%]; Desarrollador Semisenior [33.33%] |
| 59 | 1.4.2.9 | Realizar code review del modulo | 6.05d | 2026-05-07 | 2026-05-13 | 58 |  | Lider Tecnico [25%]; Desarrollador Semisenior [25%]; Desarrollador Junior [25%]; Tester [25%] |
| 60 | 1.4.2.10 | Desarrollar funcionalidad del panel de administracion | 9.05d | 2026-05-14 | 2026-05-25 | 55 |  | Desarrollador Semisenior [66.67%]; Desarrollador Junior [33.33%] |
| 61 | 1.4.2.11 | Realizar testing unitario del modulo | 2.67d | 2026-05-22 | 2026-05-26 | 60 |  | Desarrollador Semisenior [66.67%]; Desarrollador Junior [33.33%] |
| 62 | 1.4.2.12 | Realizar code review del modulo | 4.92d | 2026-05-25 | 2026-05-28 | 61, 56 |  | Lider Tecnico [25%]; Desarrollador Semisenior [25%]; Desarrollador Junior [25%]; Tester [25%] |
| 63 | 1.4.2.13 | Desarrollar funcionalidad de historial de turnos | 6.42d | 2026-05-07 | 2026-05-14 | 58 |  | Desarrollador Junior |
| 64 | 1.4.2.14 | Realizar testing unitario del modulo | 3.55d | 2026-05-13 | 2026-05-18 | 63 |  | Desarrollador Junior |
| 65 | 1.4.2.15 | Realizar code review del modulo | 6.17d | 2026-05-15 | 2026-05-21 | 64, 53 |  | Lider Tecnico [25%]; Desarrollador Semisenior [25%]; Desarrollador Junior [25%]; Tester [25%] |
| 66 | 1.4.3.1 | Integrar todos los modulos desarrollados | 10.93d | 2026-05-27 | 2026-06-08 | 62 |  | Lider Tecnico [50%]; Desarrollador Semisenior [25%]; Desarrollador Junior [25%] |
| 67 | 1.4.3.2 | Realizar test de integracion entre modulos | 7.17d | 2026-06-04 | 2026-06-11 | 66 |  | Lider Tecnico [50%]; Desarrollador Semisenior [25%]; Desarrollador Junior [25%] |
| 68 | 1.4.3.3 | Validar funcionamiento del sistema integrado | 5.3d | 2026-06-10 | 2026-06-15 | 67 |  | Lider Tecnico [50%]; Desarrollador Semisenior [25%]; Desarrollador Junior [25%] |
| 69 | 1.13 | (E) Integracion de todos los modulos y validacion en entorno de pruebas | 0d | 2026-06-12 | 2026-06-12 | 68 |  |  |

| ID | WBS | Task | Duration | Start | Finish | Predecessors | Constraint | Resources |
| --- | --- | --- | --- | --- | --- | --- | --- | --- |
| 70 | 1.5 | **Fase 4 Validacion y Testing** | 23.43d | 2026-06-12 | 2026-09-22 |  |  |  |
| 71 | 1.5.1 | Recopilar errores detectados | 3.3d | 2026-06-12 | 2026-06-16 | 69 |  | Tester [80%]; Lider Tecnico [20%] |
| 72 | 1.5.3 | Documentar relevamiento de errores | 3.3d | 2026-06-15 | 2026-06-17 | 71 | start no later than 2027-05-12 | Tester [80%]; Lider Tecnico [20%] |
| 73 | 1.5.4 | Corregir errores relevados | 5.92d | 2026-06-16 | 2026-06-22 | 72 |  | Desarrollador Semisenior [50%]; Desarrollador Junior [25%]; Lider Tecnico [12.5%]; Tester [12.5%] |
| 74 | 1.5.5 | Re-testear funcionalidades corregidas | 5.3d | 2026-06-18 | 2026-06-23 | 73 |  | Desarrollador Semisenior [57.14%]; Desarrollador Junior [28.57%]; Tester [14.29%] |
| 75 | 1.5.6 | Verificar cumplimiento de cada criterio | 3.8d | 2026-06-22 | 2026-06-24 | 74, 72 |  | Tester [44.44%]; Project Manager [11.11%]; Lider Tecnico [44.44%] |
| 76 | 1.5.7 | Documentar resultado de la verificacion | 1.8d | 2026-06-23 | 2026-06-24 | 75 |  | Tester |
| 77 | 1.5.8 | Redactar acta de aceptacion | 2.75d | 2026-06-23 | 2026-06-25 | 76 |  | Tester [50%]; Project Manager [50%] |
| 78 | 1.5.10.1 | Definir alcance y estrategia de testing | 4.67d | 2026-06-12 | 2026-06-17 | 69 |  | Tester [80%]; Project Manager [20%] |
| 79 | 1.5.10.2 | Redactar plan de pruebas | 3.3d | 2026-06-16 | 2026-06-18 | 78 |  | Tester [80%]; Project Manager [20%] |
| 80 | 1.5.10.4 | Definir casos de prueba no funcionales | 4.05d | 2026-06-17 | 2026-06-22 | 79 |  | Tester |
| 81 | 1.5.10.5 | Ejecutar casos de prueba | 5.3d | 2026-06-19 | 2026-06-24 | 80 |  | Tester [50%]; Desarrollador Semisenior [25%]; Desarrollador Junior [25%] |
| 82 | 1.5.10.6 | Registrar resultados de la ejecucion | 3.3d | 2026-06-23 | 2026-06-25 | 81 |  | Tester [66.67%]; Desarrollador Semisenior [33.33%] |
| 83 | 1.5.11.1 | Seleccionar sucursales para el piloto | 3.5d | 2026-06-24 | 2026-06-26 | 82 | start no later than 2027-03-30 | Tester [72%]; Lider Tecnico [28%] |
| 84 | 1.5.11.2 | Definir duracion y criterios de exito | 6.12d | 2026-06-25 | 2026-07-01 | 83 |  | Tester [72%]; Lider Tecnico [28%] |
| 85 | 1.5.11.3 | Redactar plan de prueba piloto | 4d | 2026-06-30 | 2026-07-02 | 84 |  | Tester [57.14%]; Analista Funcional [28.57%]; Lider Tecnico [14.29%] |
| 86 | 1.5.11.4 | Desplegar el sistema para las sucursales | 3.5d | 2026-07-01 | 2026-07-03 | 85 | start no later than 2027-04-08 | Tester [72%]; Lider Tecnico [28%] |
| 87 | 1.5.11.5 | Ejecutar la prueba piloto con usuarios reales | 7.38d | 2026-07-02 | 2026-07-09 | 86 |  | Tester [80%]; Lider Tecnico [20%] |
| 88 | 1.5.11.6 | Registrar incidencias durante la ejecucion | 3.5d | 2026-07-08 | 2026-07-10 | 87 |  | Tester [76.9%]; Lider Tecnico [23.1%] |
| 89 | 1.5.11.7 | Consolidar resultados del piloto | 3.12d | 2026-07-09 | 2026-07-13 | 88 |  | Tester |
| 90 | 1.5.11.8 | Redactar informe de resultados | 3.12d | 2026-07-10 | 2026-07-14 | 89 | start no later than 2027-05-03 | Tester |
| 91 | 1.15 | (E) Plan de pruebas elaborado y validado con el sponsor | 0d | 2026-06-17 | 2026-06-17 | 79 |  |  |
| 92 | 1.16 | (E) Prueba piloto realizada y documentada | 0d | 2026-07-13 | 2026-07-13 | 90 |  |  |
| 93 | 1.17 | (E) Verificacion de cumplimiento de criterios de aceptacion de calidad | 0d | 2026-06-23 | 2026-06-23 | 76 |  |  |
| 94 | 1.18 | (E) Acta de aceptacion de sistema elaborada y firmada | 0d | 2026-07-13 | 2026-07-13 | 91, 92, 93 |  |  |

| ID | WBS | Task | Type | Duration | Start | Finish | Predecessors | Constraint | Resources |
| --- | --- | --- | --- | --- | --- | --- | --- | --- | --- |
| 95 | 1.6 | **Fase 5 Capacitacion** |  | 14.25d | 2026-07-13 | 2026-07-30 |  |  |  |
| 96 | 1.6.1.1 | Redactar manual de usuario |  | 6.5d | 2026-07-13 | 2026-07-20 | 94 |  | Analista Funcional |
| 97 | 1.6.1.2 | Entregar manual de usuario al Cliente |  | 3d | 2026-07-17 | 2026-07-21 | 96 | start no later than 2026-07-17 | Analista Funcional [50%]; Project Manager [50%] |
| 98 | 1.6.1.3 | Redactar manual de administracion |  | 8.62d | 2026-07-13 | 2026-07-21 | 94 |  | Lider Tecnico [50%]; Desarrollador Semisenior [25%]; Desarrollador Junior [25%] |
| 99 | 1.6.1.4 | Entregar manual de administracion al Cliente |  | 5.62d | 2026-07-17 | 2026-07-23 | 98 | start no later than 2026-07-17 | Analista Funcional [50%]; Project Manager [50%] |
| 100 | 1.6.1.5 | Coordinar horarios de capacitacion |  | 2.62d | 2026-07-22 | 2026-07-24 | 99, 97 |  | Analista Funcional [69.23%]; Project Manager [30.77%] |
| 101 | 1.6.1.6 | Dictar capacitacion al personal |  | 6.5d | 2026-07-23 | 2026-07-30 | 100 |  | Analista Funcional [80%]; Lider Tecnico [20%] |
| 102 | 1.7 | **Fase 6 Despliegue** |  | 9.88d | 2026-07-29 | 2026-08-13 |  |  |  |
| 103 | 1.7.1.1 | Configurar infraestructura de produccion |  | 5.25d | 2026-07-29 | 2026-08-04 | 101 |  | Lider Tecnico [66.67%]; Desarrollador Semisenior [33.33%] |
| 104 | 1.7.1.2 | Desplegar la aplicacion en produccion |  | 2.62d | 2026-08-03 | 2026-08-05 | 103 |  | Lider Tecnico [66.67%]; Desarrollador Semisenior [33.33%] |
| 105 | 1.7.1.3 | Redactar documentacion tecnica final |  | 5.75d | 2026-08-04 | 2026-08-11 | 104 |  | Lider Tecnico |
| 106 | 1.7.1.4 | Entregar documentacion tecnica al Cliente |  | 2.62d | 2026-08-10 | 2026-08-12 | 105 | start no later than 2027-07-13 | Lider Tecnico |
| 107 | 1.8 | **Fase 7 Cierre del Proyecto** |  | 11.57d | 2026-08-11 | 2026-09-02 |  |  |  |
| 108 | 1.8.1 | Recopilar lecciones aprendidas con el equipo |  | 8d | 2026-08-11 | 2026-08-19 | 106 |  | Project Manager [28.57%]; Lider Tecnico [14.29%]; Analista Funcional [14.29%]; Desarrollador Semisenior [14.29%]; Desarrollador Junior [14.29%]; Tester [14.29%] |
| 109 | 1.8.2 | Documentar lecciones aprendidas |  | 5.5d | 2026-08-17 | 2026-08-20 | 108 |  | Project Manager [28.57%]; Lider Tecnico [14.29%]; Analista Funcional [14.29%]; Desarrollador Semisenior [14.29%]; Desarrollador Junior [14.29%]; Tester [14.29%] |
| 110 | 1.8.3 | Consolidar informacion del proyecto |  | 4.25d | 2026-08-18 | 2026-08-21 | 109 |  | Project Manager |
| 111 | 1.8.4 | Redactar informe de cierre |  | 3.12d | 2026-08-20 | 2026-08-24 | 110 |  | Project Manager |
| 112 | 1.8.5 | Redactar acta de conformidad |  | 4.25d | 2026-08-21 | 2026-08-26 | 111 |  | Project Manager |
| 113 | 1.8.6 | Obtener firma del acta de conformidad |  | 0.45d | 2026-08-25 | 2026-08-25 | 112 |  | Project Manager |
| 114 | 1.8.7 | (E) Firma de acta de conformidad realizada | milestone | 0d | 2026-08-25 | 2026-08-25 | 113 |  |  |
