# Barber_Shop_Turnos.xml

Schedule from MS Project XML, 2026-08-31 to 2027-08-06.

## Calendars

- Estandar[Imported][Imported]: Mon-Fri 08:00-17:00; Sat-Sun off.

## Resources

| Resource | Rate |
| --- | --- |
| Unassigned |  |
| Project Manager | 15000 |
| Lider Tecnico | 12000 |
| Analista Funcional | 9000 |
| Desarrollador Semisenior | 7500 |
| Desarrollador Junior | 7000 |
| Tester | 8500 |

## Schedule

| ID | WBS | Task | Duration | Start | Finish | Predecessors | Constraint | Resources |
| --- | --- | --- | --- | --- | --- | --- | --- | --- |
| 1 | 1 | **Implementacion de sistema de gestion de turnos web para taller barber shop** | 95.25d? | 2026-08-31 | 2027-08-06 |  |  |  |
| 2 | 1.1.1 | **Fase 0 Gestion del proyecto** | 39.12d? | 2026-08-31 | 2026-10-16 |  |  |  |
| 3 | 1.1.1.1 | Redactar acta de proyecto | 1.38d | 2026-08-31 | 2026-09-02 |  |  | Project Manager |
| 4 | 1.1.1.2 | Documentar matriz de riesgos | 3.12d | 2026-09-02 | 2026-09-08 | 3 |  | Lider Tecnico [16.67%]; Project Manager [83.33%] |
| 5 | 1.1.1.3 | Confeccionar diagrama de WBS | 3.25d | 2026-09-08 | 2026-09-16 | 4 |  | Project Manager [40%]; Lider Tecnico [20%]; Analista Funcional [20%]; Tester [20%] |
| 6 | 1.1.1.4 | Documentar matriz de roles y responsabilidades | 0.62d | 2026-09-16 | 2026-09-22 | 5 | start no later than 2026-09-16 | Project Manager [66.67%]; Lider Tecnico [33.33%] |
| 7 | 1.1.1.5 | Documentar matriz de habilidades y competencias | 1.38d | 2026-09-22 | 2026-09-25 | 6 | start no later than 2026-09-22 | Project Manager [66.67%]; Lider Tecnico [33.33%] |
| 8 | 1.1.1.6 | Documentar matriz de interesados | 0.88d | 2026-09-25 | 2026-10-01 | 7 |  | Project Manager |
| 9 | 1.1.1.7 | Documentar matriz de comunicaciones | 1.62d | 2026-10-01 | 2026-10-06 | 8 |  | Project Manager |
| 10 | 1.1.1.8 | Diseñar formato/plantilla de la bitacora de cambios | 0.2d | 2026-10-06 | 2026-10-08 | 9 |  | Project Manager |
| 11 | 1.1.1.10 | Confeccionar cronograma del proyecto | 1.12d | 2026-10-08 | 2026-10-16 | 10 |  | Project Manager |
| 12 | 1.2 | (E) Acta de proyectos elaborada | 0d | 2026-09-02 | 2026-09-02 | 3 |  |  |
| 13 | 1.3 | (E) EDT elaborada | 0d | 2026-09-16 | 2026-09-16 | 5 |  |  |
| 14 | 1.4 | (E) Cronograma de proyecto elaborado | 0d | 2026-10-16 | 2026-10-16 | 11, 13 |  |  |
| 15 | 1.2 | **Fase 1 Relevamiento** | 28.75d | 2026-08-31 | 2026-10-06 | 14 |  |  |
| 16 | 1.2.4.1 | Coordinar agenda de entrevistas | 2.5d | 2026-08-31 | 2026-09-03 |  |  | Analista Funcional |
| 17 | 1.2.4.2 | Realizar entrevistas | 4.75d | 2026-08-31 | 2026-09-10 | 16 |  | Analista Funcional [52.63%] |
| 18 | 1.2.4.3 | Documentar resultados de entrevistas | 7.75d | 2026-09-08 | 2026-09-16 | 17 |  | Analista Funcional |
| 19 | 1.2.4.4 | Relevar flujo de procesos actual | 7.62d | 2026-09-11 | 2026-09-21 | 18 |  | Analista Funcional |
| 20 | 1.2.4.5 | Documentar flujo de procesos | 5.88d | 2026-09-16 | 2026-09-23 | 19 |  | Analista Funcional |
| 21 | 1.2.4.6 | Identificar requisitos funcionales | 6.5d | 2026-09-21 | 2026-09-28 | 20 |  | Analista Funcional |
| 22 | 1.2.4.7 | Identificar requisitos no funcionales | 2.88d | 2026-09-23 | 2026-10-01 | 21 |  | Analista Funcional |
| 23 | 1.2.4.8 | Documentar requisitos del sistema | 7.5d | 2026-09-28 | 2026-10-06 | 22 |  | Analista Funcional |
| 24 | 1.2.2 | Redactar acta de aprobacion | 6.88d | 2026-10-01 | 2026-10-08 | 23 |  | Analista Funcional [80%]; Project Manager [20%] |
| 25 | 1.6 | (E) Casos de uso elaborados | 0d | 2026-10-01 | 2026-10-01 | 23 |  |  |
| 26 | 1.7 | (E) Entrevistas con peluqueros y encargados realizadas y documentadas | 0d | 2026-09-11 | 2026-09-11 | 18 |  |  |
| 27 | 1.8 | (E) Acta de aprobacion de relevamiento y requisitos elaborada y firmada | 0d | 2026-10-05 | 2026-10-05 | 24 |  |  |

| ID | WBS | Task | Duration | Start | Finish | Predecessors | Constraint | Resources |
| --- | --- | --- | --- | --- | --- | --- | --- | --- |
| 28 | 1.3 | **Fase 2 Diseño** | 19.25d | 2026-08-31 | 2026-10-02 | 27 |  |  |
| 29 | 1.3.18.1 | Identificar alternativas de infraestructura | 2.25d | 2026-08-31 | 2026-09-01 |  |  | Lider Tecnico |
| 30 | 1.3.18.2 | Comparar alternativas | 2.38d | 2026-09-01 | 2026-09-03 | 29 |  | Lider Tecnico |
| 31 | 1.3.18.3 | Documentar evaluacion y seleccion | 2.62d | 2026-09-03 | 2026-09-07 | 30 |  | Lider Tecnico |
| 32 | 1.3.18.9 | Identificar alternativas de motores de BD | 2.38d | 2026-09-07 | 2026-09-08 | 31 |  | Desarrollador Semisenior [50%]; Lider Tecnico [50%] |
| 33 | 1.3.18.10 | Comparar alternativas | 2.5d | 2026-09-08 | 2026-09-10 | 32 |  | Desarrollador Semisenior [80%]; Lider Tecnico [20%] |
| 34 | 1.3.18.11 | Documentar evaluacion y seleccion | 2.75d | 2026-09-10 | 2026-09-14 | 33 |  | Desarrollador Semisenior [80%]; Lider Tecnico [20%] |
| 35 | 1.3.18.12 | Identificar entidades y atributos | 3.5d | 2026-09-14 | 2026-09-16 | 34 |  | Desarrollador Semisenior [80%]; Lider Tecnico [20%] |
| 36 | 1.3.18.13 | Confeccionar diagrama de relaciones | 3.88d | 2026-09-16 | 2026-09-21 | 35 |  | Lider Tecnico |
| 37 | 1.3.18.7 | Definir componentes y capas | 3.25d | 2026-09-07 | 2026-09-09 | 31 |  | Lider Tecnico |
| 38 | 1.3.18.8 | Confeccionar diagrama de arquitectura | 2.5d | 2026-09-09 | 2026-09-11 | 37 |  | Lider Tecnico |
| 39 | 1.3.1 | Diseñar mockups de pantallas principales | 5.62d | 2026-09-11 | 2026-09-17 | 38 | start no later than 2026-09-11 | Desarrollador Junior [75%]; Lider Tecnico [25%] |
| 40 | 1.3.3 | Ajustar mockups segun feedback | 5.5d | 2026-09-17 | 2026-09-23 | 39 |  | Desarrollador Junior [80%]; Lider Tecnico [20%] |
| 41 | 1.3.5 | Definir estandares de codificacion | 2.75d | 2026-09-11 | 2026-09-15 | 38 | start no later than 2026-09-11 | Lider Tecnico |
| 42 | 1.3.7 | Documentar normas y buenas practicas | 3.25d | 2026-09-07 | 2026-09-09 | 31 |  | Lider Tecnico |
| 43 | 1.3.9 | Asignar modulos a cada desarrollador | 3.25d | 2026-09-07 | 2026-09-09 | 31 | start no later than 2026-12-03 | Lider Tecnico |
| 44 | 1.3.11 | Documentar distribucion de modulos | 2.12d | 2026-09-09 | 2026-09-11 | 43 |  | Lider Tecnico |
| 45 | 1.3.12 | Definir criterios de aceptacion de calidad | 2.5d | 2026-09-11 | 2026-09-15 | 38, 44 |  | Project Manager [50%]; Lider Tecnico [50%] |
| 46 | 1.3.15 | Redactar acta de aprobacion de diseño | 3.38d | 2026-09-15 | 2026-09-17 | 38, 45 |  | Lider Tecnico [75%]; Project Manager [25%] |
| 47 | 1.10 | (E) Criterios de aceptacion de calidad del sistema definidos y acordados con el sponsor | 0d | 2026-09-15 | 2026-09-15 | 45 |  |  |
| 48 | 1.11 | (E) Acta de aprobacion de diseño elaborada y firmada | 0d | 2026-09-17 | 2026-09-17 | 38, 45, 46 |  |  |
| 49 | 1.4 | **Fase 3 Desarrollo** | 60.62d | 2026-08-31 | 2026-11-16 | 48 |  |  |
| 50 | 1.4.1.1 | Configurar repositorio y control de versiones | 3.75d | 2026-08-31 | 2026-09-02 | 48 |  | Desarrollador Junior [57.14%]; Desarrollador Semisenior [28.57%]; Lider Tecnico [14.29%] |
| 51 | 1.4.1.2 | Configurar entorno de desarrollo local | 4.12d | 2026-09-02 | 2026-09-04 | 50 |  | Desarrollador Junior [57.14%]; Desarrollador Semisenior [28.57%]; Lider Tecnico [14.29%] |
| 52 | 1.4.2.1 | Desarrollar funcionalidad de reserva de turnos | 6.25d | 2026-09-04 | 2026-09-18 | 51 |  | Desarrollador Semisenior [66.67%]; Desarrollador Junior [33.33%] |
| 53 | 1.4.2.2 | Realizar testing unitario del modulo | 1.12d | 2026-09-18 | 2026-09-23 | 52 |  | Desarrollador Semisenior [66.67%]; Desarrollador Junior [33.33%] |
| 54 | 1.4.2.3 | Realizar code review del modulo | 3.5d | 2026-09-23 | 2026-10-19 | 60, 53 |  | Lider Tecnico [25%]; Tester [25%]; Desarrollador Semisenior [25%]; Desarrollador Junior [25%] |
| 55 | 1.4.2.4 | Desarrollar funcionalidad de gestion de agenda | 8d | 2026-09-23 | 2026-10-05 | 53 |  | Desarrollador Semisenior [66.67%]; Desarrollador Junior [33.33%] |
| 56 | 1.4.2.5 | Realizar testing unitario del modulo | 1.12d | 2026-10-05 | 2026-10-08 | 55 | start no later than 2027-01-12 | Desarrollador Semisenior [66.67%]; Desarrollador Junior [33.33%] |
| 57 | 1.4.2.6 | Realizar code review del modulo | 3.75d | 2026-10-08 | 2026-11-26 | 66, 56 |  | Lider Tecnico [25%]; Desarrollador Semisenior [25%]; Desarrollador Junior [25%]; Tester [25%] |
| 58 | 1.4.2.7 | Desarrollar funcionalidad de notificaciones | 8.5d | 2026-09-04 | 2026-09-14 | 51 |  | Desarrollador Junior [66.67%]; Desarrollador Semisenior [33.33%] |
| 59 | 1.4.2.8 | Realizar testing unitario del modulo | 1.12d | 2026-09-14 | 2026-09-16 | 58 |  | Desarrollador Junior [66.67%]; Desarrollador Semisenior [33.33%] |
| 60 | 1.4.2.9 | Realizar code review del modulo | 3.5d | 2026-09-16 | 2026-10-16 | 59 |  | Lider Tecnico [25%]; Desarrollador Semisenior [25%]; Desarrollador Junior [25%]; Tester [25%] |
| 61 | 1.4.2.10 | Desarrollar funcionalidad del panel de administracion | 8d | 2026-10-08 | 2026-10-16 | 56 |  | Desarrollador Semisenior [66.67%]; Desarrollador Junior [33.33%] |
| 62 | 1.4.2.11 | Realizar testing unitario del modulo | 1.12d | 2026-10-16 | 2026-10-20 | 61 |  | Desarrollador Semisenior [66.67%]; Desarrollador Junior [33.33%] |
| 63 | 1.4.2.12 | Realizar code review del modulo | 12d | 2026-10-20 | 2026-11-30 | 62, 57 |  | Desarrollador Junior [25%]; Desarrollador Semisenior [25%]; Lider Tecnico [25%]; Tester [25%] |
| 64 | 1.4.2.13 | Desarrollar funcionalidad de historial de turnos | 6d | 2026-09-16 | 2026-09-23 | 59 |  | Desarrollador Junior |
| 65 | 1.4.2.14 | Realizar testing unitario del modulo | 2d | 2026-09-23 | 2026-09-24 | 64 |  | Desarrollador Junior |
| 66 | 1.4.2.15 | Realizar code review del modulo | 2.75d | 2026-09-24 | 2026-11-24 | 65, 54 |  | Lider Tecnico [25%]; Desarrollador Semisenior [25%]; Desarrollador Junior [25%]; Tester [25%] |
| 67 | 1.4.3.1 | Integrar todos los modulos desarrollados | 2.62d | 2026-10-22 | 2026-12-09 | 63 |  | Lider Tecnico [50%]; Desarrollador Semisenior [25%]; Desarrollador Junior [25%] |
| 68 | 1.4.3.2 | Realizar test de integracion entre modulos | 1.75d | 2026-11-02 | 2026-12-15 | 67 |  | Lider Tecnico [50%]; Desarrollador Semisenior [25%]; Desarrollador Junior [25%] |
| 69 | 1.4.3.3 | Validar funcionamiento del sistema integrado | 2.38d | 2026-11-06 | 2026-12-21 | 68 |  | Lider Tecnico [50%]; Desarrollador Semisenior [25%]; Desarrollador Junior [25%] |
| 70 | 1.13 | (E) Integracion de todos los modulos y validacion en entorno de pruebas | 0d | 2026-11-12 | 2026-11-12 | 69 |  |  |

| ID | WBS | Task | Duration | Start | Finish | Predecessors | Constraint | Resources |
| --- | --- | --- | --- | --- | --- | --- | --- | --- |
| 71 | 1.5 | **Fase 4 Validacion y Testing** | 95.25d | 2026-08-31 | 2026-12-25 | 70 |  |  |
| 72 | 1.5.1 | Recopilar errores detectados | 5d | 2026-11-13 | 2026-11-18 | 91 |  | Tester [80%]; Lider Tecnico [20%] |
| 73 | 1.5.3 | Documentar relevamiento de errores | 5.38d | 2026-11-18 | 2026-11-24 | 72 | start no later than 2027-05-12 | Tester [80%]; Lider Tecnico [20%] |
| 74 | 1.5.4 | Corregir errores relevados | 9.25d | 2026-11-24 | 2026-12-03 | 73 |  | Desarrollador Semisenior [50%]; Desarrollador Junior [25%]; Lider Tecnico [12.5%]; Tester [12.5%] |
| 75 | 1.5.5 | Re-testear funcionalidades corregidas | 6.12d | 2026-12-03 | 2026-12-09 | 74 |  | Desarrollador Semisenior [57.14%]; Desarrollador Junior [28.57%]; Tester [14.29%] |
| 76 | 1.5.6 | Verificar cumplimiento de cada criterio | 7.5d | 2026-12-09 | 2026-12-16 | 75, 73 |  | Tester [44.44%]; Project Manager [11.11%]; Lider Tecnico [44.44%] |
| 77 | 1.5.7 | Documentar resultado de la verificacion | 4.62d | 2026-12-16 | 2026-12-22 | 76 |  | Tester |
| 78 | 1.5.8 | Redactar acta de aceptacion | 5.12d | 2026-12-21 | 2026-12-25 | 77 |  | Tester [50%]; Project Manager [50%] |
| 79 | 1.5.10.1 | Definir alcance y estrategia de testing | 6.38d | 2026-08-31 | 2026-09-04 | 70 |  | Tester [80%]; Project Manager [20%] |
| 80 | 1.5.10.2 | Redactar plan de pruebas | 4.12d | 2026-09-04 | 2026-09-09 | 79 |  | Tester [80%]; Project Manager [20%] |
| 81 | 1.5.10.4 | Definir casos de prueba no funcionales | 5.75d | 2026-09-09 | 2026-09-16 | 80 |  | Tester |
| 82 | 1.5.10.5 | Ejecutar casos de prueba | 8.38d | 2026-09-16 | 2026-09-23 | 81 |  | Tester [50%]; Desarrollador Semisenior [25%]; Desarrollador Junior [25%] |
| 83 | 1.5.10.6 | Registrar resultados de la ejecucion | 4d | 2026-09-23 | 2026-09-28 | 82 |  | Tester [66.67%]; Desarrollador Semisenior [33.33%] |
| 84 | 1.5.11.1 | Seleccionar sucursales para el piloto | 4.12d | 2026-09-28 | 2026-10-01 | 83 | start no later than 2027-03-30 | Tester [72%]; Lider Tecnico [28%] |
| 85 | 1.5.11.2 | Definir duracion y criterios de exito | 4.75d | 2026-10-01 | 2026-10-06 | 84 |  | Tester [72%]; Lider Tecnico [28%] |
| 86 | 1.5.11.3 | Redactar plan de prueba piloto | 5.75d | 2026-10-06 | 2026-10-12 | 85 |  | Tester [57.14%]; Analista Funcional [28.57%]; Lider Tecnico [14.29%] |
| 87 | 1.5.11.4 | Desplegar el sistema para las sucursales | 4.12d | 2026-10-12 | 2026-10-15 | 86 | start no later than 2027-04-08 | Tester [72%]; Lider Tecnico [28%] |
| 88 | 1.5.11.5 | Ejecutar la prueba piloto con usuarios reales | 11d | 2026-10-15 | 2026-10-27 | 87 |  | Tester [80%]; Lider Tecnico [20%] |
| 89 | 1.5.11.6 | Registrar incidencias durante la ejecucion | 9.25d | 2026-10-27 | 2026-11-05 | 88 |  | Tester [76.9%]; Lider Tecnico [23.1%] |
| 90 | 1.5.11.7 | Consolidar resultados del piloto | 3.88d | 2026-11-05 | 2026-11-10 | 89 | start no later than 2026-11-05 | Tester |
| 91 | 1.5.11.8 | Redactar informe de resultados | 4.12d | 2026-11-10 | 2026-11-13 | 90 | start no later than 2027-05-03 | Tester |
| 92 | 1.15 | (E) Plan de pruebas elaborado y validado con el sponsor | 0d | 2026-09-09 | 2026-09-09 | 80 |  |  |
| 93 | 1.16 | (E) Prueba piloto realizada y documentada | 0d | 2026-11-13 | 2026-11-13 | 91 |  |  |
| 94 | 1.17 | (E) Verificacion de cumplimiento de criterios de aceptacion de calidad | 0d | 2026-12-21 | 2026-12-21 | 77 |  |  |
| 95 | 1.18 | (E) Acta de aceptacion de sistema elaborada y firmada | 0d | 2026-12-21 | 2026-12-21 | 92, 93, 94 |  |  |

| ID | WBS | Task | Type | Duration | Start | Finish | Predecessors | Constraint | Resources |
| --- | --- | --- | --- | --- | --- | --- | --- | --- | --- |
| 96 | 1.6 | **Fase 5 Capacitacion** |  | 12.25d | 2026-08-31 | 2026-09-17 | 95 |  |  |
| 97 | 1.6.1.1 | Redactar manual de usuario |  | 5.62d | 2026-08-31 | 2026-09-04 |  |  | Analista Funcional |
| 98 | 1.6.1.2 | Entregar manual de usuario al Cliente |  | 4.88d | 2026-09-04 | 2026-09-09 | 97 |  | Analista Funcional [50%]; Project Manager [50%] |
| 99 | 1.6.1.3 | Redactar manual de administracion |  | 7.12d | 2026-08-31 | 2026-09-04 |  |  | Lider Tecnico [50%]; Desarrollador Semisenior [25%]; Desarrollador Junior [25%] |
| 100 | 1.6.1.4 | Entregar manual de administracion al Cliente |  | 5.25d | 2026-09-04 | 2026-09-10 | 99 |  | Analista Funcional [50%]; Project Manager [50%] |
| 101 | 1.6.1.5 | Coordinar horarios de capacitacion |  | 9.88d | 2026-09-07 | 2026-09-16 | 100, 98 |  | Analista Funcional [69.23%]; Project Manager [30.77%] |
| 102 | 1.6.1.6 | Dictar capacitacion al personal |  | 15.62d | 2026-09-07 | 2026-09-23 | 101 |  | Analista Funcional [80%]; Lider Tecnico [20%] |
| 103 | 1.7 | **Fase 6 Despliegue** |  | 11.88d | 2026-08-31 | 2026-09-14 | 102 |  |  |
| 104 | 1.7.1.1 | Configurar infraestructura de produccion |  | 6.38d | 2026-08-31 | 2026-09-04 |  |  | Lider Tecnico [66.67%]; Desarrollador Semisenior [33.33%] |
| 105 | 1.7.1.2 | Desplegar la aplicacion en produccion |  | 3.62d | 2026-09-04 | 2026-09-08 | 104 |  | Lider Tecnico [66.67%]; Desarrollador Semisenior [33.33%] |
| 106 | 1.7.1.3 | Redactar documentacion tecnica final |  | 5d | 2026-09-08 | 2026-09-14 | 105 | start no later than 2026-09-08 | Lider Tecnico |
| 107 | 1.7.1.4 | Entregar documentacion tecnica al Cliente |  | 3.12d | 2026-09-14 | 2026-09-16 | 106 | start no later than 2027-07-13 | Lider Tecnico |
| 108 | 1.8 | **Fase 7 Cierre del Proyecto** |  | 20d | 2026-09-14 | 2026-10-08 | 107 |  |  |
| 109 | 1.8.1 | Recopilar lecciones aprendidas con el equipo |  | 10.25d | 2026-09-14 | 2026-09-22 | 107 |  | Project Manager [28.57%]; Lider Tecnico [14.29%]; Analista Funcional [14.29%]; Desarrollador Semisenior [14.29%]; Desarrollador Junior [14.29%]; Tester [14.29%] |
| 110 | 1.8.2 | Documentar lecciones aprendidas |  | 10.62d | 2026-09-18 | 2026-09-30 | 109 |  | Project Manager [28.57%]; Lider Tecnico [14.29%]; Analista Funcional [14.29%]; Desarrollador Semisenior [14.29%]; Desarrollador Junior [14.29%]; Tester [14.29%] |
| 111 | 1.8.3 | Consolidar informacion del proyecto |  | 9.12d | 2026-09-23 | 2026-10-05 | 110 |  | Project Manager |
| 112 | 1.8.4 | Redactar informe de cierre |  | 10.12d | 2026-09-28 | 2026-10-09 | 111 |  | Project Manager |
| 113 | 1.8.5 | Redactar acta de conformidad |  | 9.38d | 2026-10-02 | 2026-10-14 | 112 |  | Project Manager |
| 114 | 1.8.6 | Obtener firma del acta de conformidad |  | 11.38d | 2026-10-07 | 2026-10-21 | 113 |  | Project Manager |
| 115 | 1.8.7 | (E) Firma de acta de conformidad realizada | milestone | 0d | 2026-10-08 | 2026-10-08 | 114 |  |  |
