# Barber_Shop_Turnos.xml

Schedule from ProjectLibre, 2026-08-31 to 2027-03-12.

## Calendars

- Estandar[Imported][Imported]: Mon-Fri 08:00-17:00; Sat-Sun off.

## Resources

| Resource |
| --- |
| Unassigned |
| Project Manager |
| Lider Tecnico |
| Analista Funcional |
| Desarrollador Semisenior |
| Desarrollador Junior |
| Tester |

## Schedule

| ID | WBS | Task | Duration | Start | Finish | Predecessors | Resources |
| --- | --- | --- | --- | --- | --- | --- | --- |
| 1 | 1 | **Implementacion de sistema de gestion de turnos web para taller barber shop** | 157.5d | 2026-08-31 | 2027-03-12 |  |  |
| 2 | 1.1.1 | **Fase 0 Gestion del proyecto** | 14.12d | 2026-08-31 | 2026-09-16 |  |  |
| 3 | 1.1.1.1 | Redactar acta de proyecto | 2.25d | 2026-08-31 | 2026-09-02 |  | Project Manager [90%] |
| 4 | 1.1.1.2 | Documentar matriz de riesgos | 1.12d | 2026-09-02 | 2026-09-03 | 3 | Lider Tecnico [20%]; Project Manager |
| 5 | 1.1.1.3 | Confeccionar diagrama de WBS | 1.12d | 2026-09-03 | 2026-09-04 | 4 | Project Manager; Lider Tecnico [50%]; Analista Funcional [50%]; Tester [50%] |
| 6 | 1.1.1.4 | Documentar matriz de roles y responsabilidades | 1.12d | 2026-09-04 | 2026-09-07 | 5 | Project Manager; Lider Tecnico [50%] |
| 7 | 1.1.1.5 | Documentar matriz de habilidades y competencias | 1.12d | 2026-09-07 | 2026-09-08 | 6 | Project Manager; Lider Tecnico [50%] |
| 8 | 1.1.1.6 | Documentar matriz de interesados | 1d | 2026-09-08 | 2026-09-09 | 7 | Project Manager [90%] |
| 9 | 1.1.1.7 | Documentar matriz de comunicaciones | 1d | 2026-09-09 | 2026-09-10 | 8 | Project Manager |
| 10 | 1.1.1.8 | Diseñar formato/plantilla de la bitacora de cambios | 2.25d | 2026-09-10 | 2026-09-14 | 9 | Project Manager |
| 11 | 1.1.1.10 | Confeccionar cronograma del proyecto | 2d | 2026-09-14 | 2026-09-16 | 10 | Project Manager [90%] |
| 12 | 1.2 | (E) Acta de proyectos elaborada | 0d | 2026-09-02 | 2026-09-02 | 3 |  |
| 13 | 1.3 | (E) EDT elaborada | 0d | 2026-09-04 | 2026-09-04 | 5 |  |
| 14 | 1.4 | (E) Cronograma de proyecto elaborado | 0d | 2026-09-16 | 2026-09-16 | 11, 13 |  |
| 15 | 1.2 | **Fase 1 Relevamiento** | 17.62d | 2026-09-16 | 2026-10-08 |  |  |
| 16 | 1.2.4.1 | Coordinar agenda de entrevistas | 1d | 2026-09-16 | 2026-09-17 | 14 | Analista Funcional [50%] |
| 17 | 1.2.4.2 | Realizar entrevistas | 4.75d | 2026-09-17 | 2026-09-24 | 16 | Analista Funcional [50%] |
| 18 | 1.2.4.3 | Documentar resultados de entrevistas | 1d | 2026-09-24 | 2026-09-25 | 17 | Analista Funcional |
| 19 | 1.2.4.4 | Relevar flujo de procesos actual | 2d | 2026-09-25 | 2026-09-29 | 18 | Analista Funcional [75%] |
| 20 | 1.2.4.5 | Documentar flujo de procesos | 1d | 2026-09-29 | 2026-09-30 | 19 | Analista Funcional |
| 21 | 1.2.4.6 | Identificar requisitos funcionales | 2d | 2026-09-30 | 2026-10-02 | 20 | Analista Funcional |
| 22 | 1.2.4.7 | Identificar requisitos no funcionales | 2d | 2026-10-02 | 2026-10-06 | 21 | Analista Funcional |
| 23 | 1.2.4.8 | Documentar requisitos del sistema | 1.2d | 2026-10-06 | 2026-10-07 | 22 | Analista Funcional |
| 24 | 1.2.2 | Redactar acta de aprobacion | 0.93d | 2026-10-07 | 2026-10-08 | 23 | Analista Funcional; Project Manager [25%] |
| 25 | 1.6 | (E) Casos de uso elaborados | 0d | 2026-10-07 | 2026-10-07 | 23 |  |
| 26 | 1.7 | (E) Entrevistas con peluqueros y encargados realizadas y documentadas | 0d | 2026-09-25 | 2026-09-25 | 18 |  |
| 27 | 1.8 | (E) Acta de aprobacion de relevamiento y requisitos elaborada y firmada | 0d | 2026-10-08 | 2026-10-08 | 24 |  |

| ID | WBS | Task | Duration | Start | Finish | Predecessors | Constraint | Resources |
| --- | --- | --- | --- | --- | --- | --- | --- | --- |
| 28 | 1.3 | **Fase 2 Diseño** | 11.07d | 2026-10-08 | 2026-10-22 |  |  |  |
| 29 | 1.3.18.1 | Identificar alternativas de infraestructura | 0.3d | 2026-10-08 | 2026-10-08 | 27 |  | Lider Tecnico |
| 30 | 1.3.18.2 | Comparar alternativas | 1d | 2026-10-08 | 2026-10-09 | 29 |  | Lider Tecnico |
| 31 | 1.3.18.3 | Documentar evaluacion y seleccion | 0.8d | 2026-10-09 | 2026-10-12 | 30 |  | Lider Tecnico |
| 32 | 1.3.18.9 | Identificar alternativas de motores de BD | 0.42d | 2026-10-12 | 2026-10-12 | 31 |  | Desarrollador Semisenior; Lider Tecnico |
| 33 | 1.3.18.10 | Comparar alternativas | 1.12d | 2026-10-12 | 2026-10-13 | 32 |  | Desarrollador Semisenior; Lider Tecnico [25%] |
| 34 | 1.3.18.11 | Documentar evaluacion y seleccion | 0.7d | 2026-10-13 | 2026-10-14 | 33 |  | Desarrollador Semisenior; Lider Tecnico [25%] |
| 35 | 1.3.18.13 | Confeccionar diagrama de relaciones | 1d | 2026-10-14 | 2026-10-15 | 34 |  |  |
| 36 | 1.3.18.7 | Definir componentes y capas | 1d | 2026-10-12 | 2026-10-13 | 31 |  | Lider Tecnico |
| 37 | 1.3.18.8 | Confeccionar diagrama de arquitectura | 0.6d | 2026-10-13 | 2026-10-13 | 36 |  | Lider Tecnico |
| 38 | 1.3.1 | Diseñar mockups de pantallas principales | 4.62d | 2026-10-13 | 2026-10-20 | 37 |  | Desarrollador Junior [75%]; Lider Tecnico [25%] |
| 39 | 1.3.3 | Ajustar mockups segun feedback | 2.25d | 2026-10-20 | 2026-10-22 | 38 |  | Desarrollador Junior; Lider Tecnico [25%] |
| 40 | 1.3.5 | Definir estandares de codificacion | 1.75d | 2026-10-13 | 2026-10-15 | 37 |  | Lider Tecnico |
| 41 | 1.3.7 | Documentar normas y buenas practicas | 1d | 2026-10-12 | 2026-10-13 | 31 |  | Lider Tecnico |
| 42 | 1.3.9 | Asignar modulos a cada desarrollador | 1.5d | 2026-10-12 | 2026-10-13 | 31 | start no later than 2026-12-03 | Lider Tecnico |
| 43 | 1.3.11 | Documentar distribucion de modulos | 0.6d | 2026-10-13 | 2026-10-14 | 42 |  | Lider Tecnico |
| 44 | 1.3.12 | Definir criterios de aceptacion de calidad | 3.38d | 2026-10-14 | 2026-10-19 | 37, 43 |  | Project Manager [65.65%]; Lider Tecnico [65.65%] |
| 45 | 1.3.15 | Redactar acta de aprobacion de diseño | 1.12d | 2026-10-19 | 2026-10-20 | 37, 44 |  | Lider Tecnico [75%]; Project Manager [25%] |
| 46 | 1.10 | (E) Criterios de aceptacion de calidad del sistema definidos y acordados con el sponsor | 0d | 2026-10-19 | 2026-10-19 | 44 |  |  |
| 47 | 1.11 | (E) Acta de aprobacion de diseño elaborada y firmada | 0d | 2026-10-20 | 2026-10-20 | 37, 44, 45 |  |  |
| 48 | 1.4 | **Fase 3 Desarrollo** | 49.25d | 2026-10-20 | 2026-12-21 |  |  |  |
| 49 | 1.4.1.1 | Configurar repositorio y control de versiones | 2.5d | 2026-10-20 | 2026-10-22 | 47 |  | Desarrollador Junior; Desarrollador Semisenior [50%]; Lider Tecnico [25%] |
| 50 | 1.4.1.2 | Configurar entorno de desarrollo local | 2.5d | 2026-10-22 | 2026-10-26 | 49 |  | Desarrollador Junior; Desarrollador Semisenior [50%]; Lider Tecnico [25%] |
| 51 | 1.4.2.1 | Desarrollar funcionalidad de reserva de turnos | 9d | 2026-10-26 | 2026-11-05 | 50 |  | Desarrollador Semisenior; Desarrollador Junior [50%] |
| 52 | 1.4.2.2 | Realizar testing unitario del modulo | 1.12d | 2026-11-05 | 2026-11-06 | 51 |  | Desarrollador Semisenior; Desarrollador Junior [50%] |
| 53 | 1.4.2.3 | Realizar code review del modulo | 1.88d | 2026-11-09 | 2026-11-10 | 59, 52 |  | Lider Tecnico [25%]; Tester [25%]; Desarrollador Semisenior [25%]; Desarrollador Junior [25%] |
| 54 | 1.4.2.4 | Desarrollar funcionalidad de gestion de agenda | 7.88d | 2026-11-06 | 2026-11-17 | 52 |  | Desarrollador Semisenior; Desarrollador Junior [50%] |
| 55 | 1.4.2.5 | Realizar testing unitario del modulo | 1.12d | 2026-11-17 | 2026-11-18 | 54 | start no later than 2027-01-12 | Desarrollador Semisenior; Desarrollador Junior [50%] |
| 56 | 1.4.2.6 | Realizar code review del modulo | 2d | 2026-11-18 | 2026-11-20 | 65, 55 |  | Lider Tecnico [25%]; Desarrollador Semisenior [25%]; Desarrollador Junior [25%]; Tester [25%] |
| 57 | 1.4.2.7 | Desarrollar funcionalidad de notificaciones | 7.25d | 2026-10-26 | 2026-11-04 | 50 |  | Desarrollador Junior; Desarrollador Semisenior [50%] |
| 58 | 1.4.2.8 | Realizar testing unitario del modulo | 1.12d | 2026-11-04 | 2026-11-05 | 57 |  | Desarrollador Junior; Desarrollador Semisenior [50%] |
| 59 | 1.4.2.9 | Realizar code review del modulo | 2.25d | 2026-11-05 | 2026-11-09 | 58 |  | Lider Tecnico [25%]; Desarrollador Semisenior [25%]; Desarrollador Junior [25%]; Tester [25%] |
| 60 | 1.4.2.10 | Desarrollar funcionalidad del panel de administracion | 6.75d | 2026-11-18 | 2026-11-26 | 55 |  | Desarrollador Semisenior; Desarrollador Junior [50%] |
| 61 | 1.4.2.11 | Realizar testing unitario del modulo | 1.12d | 2026-11-26 | 2026-11-27 | 60 |  | Desarrollador Semisenior; Desarrollador Junior [50%] |
| 62 | 1.4.2.12 | Realizar code review del modulo | 1.75d | 2026-11-27 | 2026-12-01 | 61, 56 |  | Lider Tecnico [25%]; Desarrollador Semisenior [25%]; Desarrollador Junior [25%]; Tester [25%] |
| 63 | 1.4.2.13 | Desarrollar funcionalidad de historial de turnos | 4.5d | 2026-11-05 | 2026-11-11 | 58 |  | Desarrollador Junior |
| 64 | 1.4.2.14 | Realizar testing unitario del modulo | 1.38d | 2026-11-11 | 2026-11-13 | 63 |  | Desarrollador Junior |
| 65 | 1.4.2.15 | Realizar code review del modulo | 2.25d | 2026-11-13 | 2026-11-17 | 64, 53 |  | Lider Tecnico [25%]; Desarrollador Semisenior [25%]; Desarrollador Junior [25%]; Tester [25%] |
| 66 | 1.4.3.1 | Integrar todos los modulos desarrollados | 7.38d | 2026-12-01 | 2026-12-09 | 62 |  | Lider Tecnico [127.88%]; Desarrollador Semisenior [63.94%]; Desarrollador Junior [63.94%] |
| 67 | 1.4.3.2 | Realizar test de integracion entre modulos | 4.75d | 2026-12-09 | 2026-12-16 | 66 |  | Lider Tecnico [112.5%]; Desarrollador Semisenior [56.25%]; Desarrollador Junior [56.25%] |
| 68 | 1.4.3.3 | Validar funcionamiento del sistema integrado | 3.38d | 2026-12-16 | 2026-12-21 | 67 |  | Lider Tecnico [112.5%]; Desarrollador Semisenior [56.25%]; Desarrollador Junior [56.25%] |
| 69 | 1.13 | (E) Integracion de todos los modulos y validacion en entorno de pruebas | 0d | 2026-12-21 | 2026-12-21 | 68 |  |  |

| ID | WBS | Task | Duration | Start | Finish | Predecessors | Constraint | Resources |
| --- | --- | --- | --- | --- | --- | --- | --- | --- |
| 70 | 1.5 | **Fase 4 Validacion y Testing** | 32.23d | 2026-12-21 | 2027-01-28 |  |  |  |
| 71 | 1.5.1 | Recopilar errores detectados | 1.12d | 2027-01-19 | 2027-01-19 | 90 |  | Tester; Lider Tecnico [25%] |
| 72 | 1.5.3 | Documentar relevamiento de errores | 1.12d | 2027-01-20 | 2027-01-20 | 71 | start no later than 2027-05-12 | Tester; Lider Tecnico [25%] |
| 73 | 1.5.4 | Corregir errores relevados | 2.25d | 2027-01-21 | 2027-01-22 | 72 |  | Desarrollador Semisenior; Desarrollador Junior [50%]; Lider Tecnico [25%]; Tester [25%] |
| 74 | 1.5.5 | Re-testear funcionalidades corregidas | 2.25d | 2027-01-25 | 2027-01-26 | 73 |  | Desarrollador Semisenior [114.29%]; Desarrollador Junior [57.14%]; Tester [28.57%] |
| 75 | 1.5.6 | Verificar cumplimiento de cada criterio | 1.12d | 2027-01-27 | 2027-01-27 | 74, 72 |  | Tester [55.56%]; Project Manager [13.89%]; Lider Tecnico [55.56%] |
| 76 | 1.5.7 | Documentar resultado de la verificacion | 0.3d | 2027-01-28 | 2027-01-28 | 75 |  | Tester [125%] |
| 77 | 1.5.8 | Redactar acta de aceptacion | 0.62d | 2027-01-28 | 2027-01-28 | 76 |  | Tester [50%]; Project Manager [50%] |
| 78 | 1.5.10.1 | Definir alcance y estrategia de testing | 2.25d | 2026-12-21 | 2026-12-23 | 69 |  | Tester; Project Manager [25%] |
| 79 | 1.5.10.2 | Redactar plan de pruebas | 1.12d | 2026-12-23 | 2026-12-24 | 78 |  | Tester; Project Manager [25%] |
| 80 | 1.5.10.4 | Definir casos de prueba no funcionales | 2d | 2026-12-24 | 2026-12-28 | 79 |  | Tester |
| 81 | 1.5.10.5 | Ejecutar casos de prueba | 2.25d | 2026-12-28 | 2026-12-30 | 80 |  | Tester; Desarrollador Semisenior [50%]; Desarrollador Junior [50%] |
| 82 | 1.5.10.6 | Registrar resultados de la ejecucion | 0.93d | 2026-12-30 | 2026-12-30 | 81 |  | Tester [133.33%]; Desarrollador Semisenior [66.67%] |
| 83 | 1.5.11.1 | Seleccionar sucursales para el piloto | 1.12d | 2026-12-31 | 2026-12-31 | 82 | start no later than 2027-03-30 | Tester [90%]; Lider Tecnico [35%] |
| 84 | 1.5.11.2 | Definir duracion y criterios de exito | 3.38d | 2027-01-01 | 2027-01-05 | 83 |  | Tester [90%]; Lider Tecnico [35%] |
| 85 | 1.5.11.3 | Redactar plan de prueba piloto | 1.12d | 2027-01-06 | 2027-01-06 | 84 |  | Tester [34.15%]; Analista Funcional [17.07%]; Lider Tecnico [8.54%] |
| 86 | 1.5.11.4 | Desplegar el sistema para las sucursales | 1.12d | 2027-01-07 | 2027-01-07 | 85 | start no later than 2027-04-08 | Tester [90%]; Lider Tecnico [35%] |
| 87 | 1.5.11.5 | Ejecutar la prueba piloto con usuarios reales | 4.5d | 2027-01-08 | 2027-01-13 | 86 |  | Tester [53.85%]; Lider Tecnico [13.46%] |
| 88 | 1.5.11.6 | Registrar incidencias durante la ejecucion | 1.12d | 2027-01-14 | 2027-01-14 | 87 |  | Tester [114.45%]; Lider Tecnico [34.37%] |
| 89 | 1.5.11.7 | Consolidar resultados del piloto | 1d | 2027-01-15 | 2027-01-15 | 88 |  | Tester |
| 90 | 1.5.11.8 | Redactar informe de resultados | 1d | 2027-01-18 | 2027-01-18 | 89 | start no later than 2027-05-03 | Tester |
| 91 | 1.15 | (E) Plan de pruebas elaborado y validado con el sponsor | 0d | 2026-12-24 | 2026-12-24 | 79 |  |  |
| 92 | 1.16 | (E) Prueba piloto realizada y documentada | 0d | 2027-01-18 | 2027-01-18 | 90 |  |  |
| 93 | 1.17 | (E) Verificacion de cumplimiento de criterios de aceptacion de calidad | 0d | 2027-01-28 | 2027-01-28 | 76 |  |  |
| 94 | 1.18 | (E) Acta de aceptacion de sistema elaborada y firmada | 0d | 2027-01-28 | 2027-01-28 | 91, 92, 93 |  |  |

| ID | WBS | Task | Type | Duration | Start | Finish | Predecessors | Constraint | Resources |
| --- | --- | --- | --- | --- | --- | --- | --- | --- | --- |
| 95 | 1.6 | **Fase 5 Capacitacion** |  | 14.25d | 2027-01-28 | 2027-02-15 |  |  |  |
| 96 | 1.6.1.1 | Redactar manual de usuario |  | 4.25d | 2027-01-28 | 2027-02-03 | 94 |  | Analista Funcional [75%] |
| 97 | 1.6.1.2 | Entregar manual de usuario al Cliente |  | 1.12d | 2027-02-03 | 2027-02-04 | 96 |  | Analista Funcional [66%]; Project Manager [66%] |
| 98 | 1.6.1.3 | Redactar manual de administracion |  | 4.88d | 2027-01-28 | 2027-02-03 | 94 |  | Lider Tecnico; Desarrollador Semisenior [50%]; Desarrollador Junior [50%] |
| 99 | 1.6.1.4 | Entregar manual de administracion al Cliente |  | 3.75d | 2027-02-03 | 2027-02-08 | 98 |  | Analista Funcional [100%]; Project Manager [100%] |
| 100 | 1.6.1.5 | Coordinar horarios de capacitacion |  | 1.12d | 2027-02-08 | 2027-02-09 | 99, 97 |  | Analista Funcional [71.89%]; Project Manager [31.95%] |
| 101 | 1.6.1.6 | Dictar capacitacion al personal |  | 4.5d | 2027-02-09 | 2027-02-15 | 100 |  | Analista Funcional [56.84%]; Lider Tecnico [14.21%] |
| 102 | 1.7 | **Fase 6 Despliegue** |  | 9.88d | 2027-02-15 | 2027-02-26 |  |  |  |
| 103 | 1.7.1.1 | Configurar infraestructura de produccion |  | 3.38d | 2027-02-15 | 2027-02-18 | 101 |  | Lider Tecnico [116.67%]; Desarrollador Semisenior [58.33%] |
| 104 | 1.7.1.2 | Desplegar la aplicacion en produccion |  | 1.12d | 2027-02-18 | 2027-02-19 | 103 |  | Lider Tecnico [116.67%]; Desarrollador Semisenior [58.33%] |
| 105 | 1.7.1.3 | Redactar documentacion tecnica final |  | 3.75d | 2027-02-19 | 2027-02-25 | 104 |  | Lider Tecnico |
| 106 | 1.7.1.4 | Entregar documentacion tecnica al Cliente |  | 1d | 2027-02-25 | 2027-02-26 | 105 | start no later than 2027-07-13 | Lider Tecnico |
| 107 | 1.8 | **Fase 7 Cierre del Proyecto** |  | 11.57d | 2027-02-26 | 2027-03-12 |  |  |  |
| 108 | 1.8.1 | Recopilar lecciones aprendidas con el equipo |  | 4d | 2027-02-26 | 2027-03-04 | 106 |  | Project Manager; Lider Tecnico [50%]; Analista Funcional [50%]; Desarrollador Semisenior [50%]; Desarrollador Junior [50%]; Tester [50%] |
| 109 | 1.8.2 | Documentar lecciones aprendidas |  | 1.12d | 2027-03-04 | 2027-03-05 | 108 |  | Project Manager; Lider Tecnico [50%]; Analista Funcional [50%]; Desarrollador Semisenior [50%]; Desarrollador Junior [50%]; Tester [50%] |
| 110 | 1.8.3 | Consolidar informacion del proyecto |  | 2d | 2027-03-05 | 2027-03-09 | 109 |  | Project Manager |
| 111 | 1.8.4 | Redactar informe de cierre |  | 1d | 2027-03-09 | 2027-03-10 | 110 |  | Project Manager |
| 112 | 1.8.5 | Redactar acta de conformidad |  | 2.3d | 2027-03-10 | 2027-03-12 | 111 |  | Project Manager |
| 113 | 1.8.6 | Obtener firma del acta de conformidad |  | 0.4d | 2027-03-12 | 2027-03-12 | 112 |  | Project Manager [50%] |
| 114 | 1.8.7 | (E) Firma de acta de conformidad realizada | milestone | 0d | 2027-03-12 | 2027-03-12 | 113 |  |  |
